# National Health Campaign

Schedule from MS Project, 2024-03-01 to 2024-04-29, A marks actual dates.
Research Program
ABC Research Ltd.

## Calendars

- Standard: Mon-Fri 08:00-12:00, 13:00-17:00; Sat-Sun off.

## Resources

| Resource |
| --- |
| Joanne Kelly |
| Junior Staff |
| Printing Service |
| Riona Carr |
| Tom Joyce |
| Conference Room |
| Mary Breen |

## Schedule

| ID | WBS | Task | Type | Duration | Start | Finish | Predecessors | Complete | Remaining | Actual start | Actual finish | Baseline start | Baseline finish | Baseline duration | Resources | Work | Actual work |
| --- | --- | --- | --- | --- | --- | --- | --- | --- | --- | --- | --- | --- | --- | --- | --- | --- | --- |
| 1 | 1 | **National Health Campaign** |  | 42d | 2024-03-01 A | 2024-04-29 |  | 58% | 17.5d |  |  | 2024-03-01 | 2024-04-29 | 42d |  | 176h | 98h |
| 2 | 1.1 | **Planning** |  | 13d | 2024-03-01 A | 2024-03-19 |  | 100% |  |  | 2024-03-04 | 2024-03-01 | 2024-03-19 | 13d |  | 16h | 16h |
| 3 | 1.1.1 | Design Questionairre | manual | 2d | 2024-03-01 A | 2024-03-04 A |  | 100% |  |  |  | 2024-03-01 | 2024-03-04 | 2d | Joanne Kelly | 16h | 16h |
| 4 | 1.2 | Type questionnairre | manual | 1d | 2024-03-05 A | 2024-03-05 A | 3 | 100% |  |  |  | 2024-03-05 | 2024-03-05 | 1d | Junior Staff | 8h | 8h |
| 5 | 1.3 | Print questionnairre | manual | 1w | 2024-03-06 A | 2024-03-12 | 4 | 75% | 0.25w |  |  | 2024-03-06 | 2024-03-12 | 1w | Printing Service | 40h | 30h |
| 6 | 1.4 | Invite interviewers to briefing meeting | manual | 3d | 2024-03-13 | 2024-03-15 | 5 |  |  |  |  | 2024-03-13 | 2024-03-15 | 3d | Riona Carr | 24h |  |
| 7 | 1.5 | Survey planning complete | milestone, manual | 0d | 2024-03-15 | 2024-03-15 | 6 |  |  |  |  | 2024-03-15 | 2024-03-15 | 0d | Tom Joyce |  |  |
| 8 | 1.6 | **Briefing setup** |  | 11d | 2024-03-15 | 2024-03-29 | 2SS | 55% | 4.95d | 2024-03-18 |  | 2024-03-15 | 2024-03-29 | 11d |  | 88h | 44h |
| 9 | 1.6.1 | Book conference room for briefing meeting | manual | 4h | 2024-03-18 A | 2024-03-18 A |  | 100% |  |  |  | 2024-03-18 | 2024-03-18 | 4h | Tom Joyce | 4h | 4h |
| 10 | 1.6.2 | Contact interviewing locations | manual | 2d | 2024-03-18 | 2024-03-20 | 9 |  |  |  |  | 2024-03-18 | 2024-03-20 | 2d | Tom Joyce | 16h |  |
| 11 | 1.6.3 | Prepare rosters | manual | 4d | 2024-03-20 A | 2024-03-25 A |  | 100% |  |  |  | 2024-03-20 | 2024-03-25 | 4d | Tom Joyce | 32h | 32h |
| 12 | 1.6.4 | Prepare packs for each interviewer | manual | 2d | 2024-03-26 A | 2024-03-27 | 11 | 50% | 1d |  |  | 2024-03-26 | 2024-03-27 | 2d | Junior Staff | 16h | 8h |
| 13 | 1.6.5 | Briefing Meeting with interviewers | manual | 8h | 2024-03-28 | 2024-03-28 | 12 |  |  |  |  | 2024-03-28 | 2024-03-28 | 8h | Conference Room; Riona Carr | 16h |  |
| 14 | 1.6.6 | Interviewers briefing complete | manual | 4h | 2024-03-29 | 2024-03-29 |  |  |  |  |  | 2024-03-29 | 2024-03-29 | 4h | Riona Carr | 4h |  |
| 15 | 2 | **Data Processing** |  | 12d | 2024-03-29 | 2024-04-15 | 8 |  |  |  |  | 2024-03-29 | 2024-04-15 | 12d |  | 108h |  |
| 16 | 2.1 | Check questionnairres | manual | 2d | 2024-03-29 | 2024-04-01 |  |  |  |  |  | 2024-03-29 | 2024-04-01 | 2d | Junior Staff | 16h |  |
| 17 | 2.2 | Code questionnairres | manual | 1.5w | 2024-04-02 | 2024-04-11 | 16 |  |  |  |  | 2024-04-02 | 2024-04-11 | 1.5w | Junior Staff | 60h |  |
| 18 | 2.3 | Analyse the data | manual | 2d | 2024-04-12 | 2024-04-13 |  |  |  |  |  | 2024-04-12 | 2024-04-13 | 2d | Joanne Kelly; Tom Joyce | 32h |  |
| 19 | 2.4 | Processing data complete | milestone, manual | 0d | 2024-04-15 | 2024-04-15 | 18 |  |  |  |  | 2024-04-15 | 2024-04-15 | 0d | Junior Staff |  |  |
| 20 | 3 | **Interpretation** |  | 9d | 2024-04-15 | 2024-04-25 | 15 |  |  |  |  | 2024-04-15 | 2024-04-25 | 9d |  | 128h |  |
| 21 | 3.1 | Prepare presentation | manual | 3d | 2024-04-15 | 2024-04-17 |  |  |  |  |  | 2024-04-15 | 2024-04-17 | 3d | Mary Breen; Joanne Kelly | 48h |  |
| 22 | 3.2 | Prepare research report | manual | 1w | 2024-04-18 | 2024-04-24 | 21 |  |  |  |  | 2024-04-18 | 2024-04-24 | 1w | Mary Breen; Joanne Kelly | 80h |  |
| 23 | 3.3 | Project complete | milestone, manual | 0d | 2024-04-25 | 2024-04-25 | 22 |  |  |  |  | 2024-04-25 | 2024-04-25 | 0d | Mary Breen; Joanne Kelly |  |  |
